# pm2

Schedule from MS Project, 2022-01-04 to 2022-06-15, A marks actual dates.

## Calendars

- Standard: Mon-Fri 08:00-12:00, 13:00-17:00; Sat-Sun off.

## Resources

| Resource |
| --- |
| Mark Galvan |
| Raymond Taylor |
| Janet Tseng |

## Schedule

| ID | WBS | Task | Duration | Start | Finish | Predecessors | Complete | Constraint | Resources | Work | Actual work |
| --- | --- | --- | --- | --- | --- | --- | --- | --- | --- | --- | --- |
| 1 | 1 | Initial PresentMon2 API | 3d | 2022-01-04 A | 2022-01-06 A |  | 100% |  | Mark Galvan | 24h | 24h |
| 2 | 2 | Revise PresentMon2 API Based on Feedback | 1d | 2022-01-07 A | 2022-01-07 A | 1 | 100% |  | Mark Galvan | 8h | 8h |
| 3 | 3 | Resizable Circular Buffer | 2d | 2022-01-10 A | 2022-01-11 A | 2 | 100% |  | Mark Galvan | 16h | 16h |
| 4 | 4 | Multiple Client Data Structure Design | 2d | 2022-01-12 A | 2022-01-13 A | 3 | 100% |  | Mark Galvan | 16h | 16h |
| 5 | 5 | Multiple Client Data Structure Implementation | 3d | 2022-01-14 A | 2022-01-18 A | 4 | 100% |  | Mark Galvan | 24h | 24h |
| 6 | 6 | Update Circular Buffer Class to calculate Present Mon metrics based on window size | 2d | 2022-01-19 A | 2022-01-20 A | 5 | 100% |  | Mark Galvan | 16h | 16h |
| 7 | 7 | Create PresentMonAPI library to handle client calls to PresentMon service | 3d | 2022-01-25 A | 2022-01-27 A | 6 | 100% |  | Mark Galvan | 24h | 24h |
| 8 | 8 | Added GitHub README markdown page - high level design, API entry points, command line installation instructions, etc. | 3d | 2022-01-21 A | 2022-01-25 A | 6 | 100% |  | Janet Tseng | 24h | 24h |
| 9 | 9 | Named Pipe IPC Code Reorganization for both Service and API library | 6d | 2022-01-28 A | 2022-02-04 A | 7 | 100% |  | Mark Galvan | 48h | 48h |
| 10 | 10 | Update PresentMon2 API based on Feedback from Ray | 5d | 2022-02-07 A | 2022-02-11 A | 9 | 100% |  | Mark Galvan | 40h | 40h |
| 11 | 11 | Using new PresentMon2 API write ULTs for each function using real frame data and PresentEvents | 5d | 2022-02-14 A | 2022-02-18 A | 10 | 100% |  | Mark Galvan | 40h | 40h |
| 12 | 12 | Add named pipe frontend to return back named shared memory filename. | 1d | 2022-02-21 A | 2022-02-21 A | 11 | 100% |  | Mark Galvan | 8h | 8h |
| 13 | 13 | Metric Sampling Design - how are metics sampled, how does the data align with ETW data, how is it packaged up to client | 5d | 2022-02-22 A | 2022-02-28 A | 12 | 100% |  | Mark Galvan | 40h | 40h |
| 14 | 14 | Metric Sampling Implementation - First Half | 2d | 2022-03-01 A | 2022-03-02 A | 13 | 100% |  | Mark Galvan | 16h | 16h |
| 15 | 15 | Named Shared Memory Design - communication between client, service and presentmon | 2d | 2022-02-11 A | 2022-02-14 A |  | 100% | start no earlier than 2022-02-11 | Janet Tseng | 16h | 16h |
| 16 | 16 | **Named Shared Memory Implementation** | 21d | 2022-02-15 A | 2022-03-15 A | 15 | 100% |  |  | 264h | 264h |
| 17 | 16.1 | SimpleClientApp making connection to Streamer to open map file view | 2d | 2022-02-15 A | 2022-02-16 A | 15 | 100% |  | Janet Tseng | 16h | 16h |
| 18 | 16.2 | Client finish connection with streaming process data | 3d | 2022-02-17 A | 2022-02-21 A | 17 | 100% |  | Janet Tseng | 24h | 24h |
| 19 | 16.3 | Streamer write data interface | 1d | 2022-02-17 A | 2022-02-17 A | 17 | 100% |  | Janet Tseng | 8h | 8h |
| 20 | 16.4 | Streamer per process write data | 2d | 2022-02-18 A | 2022-02-21 A | 19 | 100% |  | Janet Tseng | 16h | 16h |
| 21 | 16.5 | Simple streamer read from flat file and write to shared mem buf | 2d | 2022-02-18 A | 2022-02-21 A | 19 | 100% |  | Janet Tseng | 16h | 16h |
| 22 | 16.6 | Client read data interface | 2d | 2022-02-22 A | 2022-02-23 A | 21 | 100% |  | Janet Tseng | 16h | 16h |
| 23 | 16.7 | Client per process read data | 3d | 2022-02-23 A | 2022-02-25 A | 22 | 100% |  | Janet Tseng | 24h | 24h |
| 24 | 16.8 | Simple client read raw data from shared mem | 1d | 2022-02-23 A | 2022-02-23 A | 22 | 100% |  | Janet Tseng | 8h | 8h |
| 25 | 16.9 | Client requests monitor process (per name/per pid) | 3d | 2022-02-24 A | 2022-02-28 A | 24 | 100% |  | Janet Tseng | 24h | 24h |
| 26 | 16.10 | Per process shared memory creation | 3d | 2022-03-01 A | 2022-03-03 A | 25 | 100% |  | Janet Tseng | 24h | 24h |
| 27 | 16.11 | PresentMon ETW directly read into shared mem | 4d | 2022-03-03 A | 2022-03-08 A | 26 | 100% |  | Janet Tseng | 32h | 32h |
| 28 | 16.12 | Multi-process monitoring from same client | 4d | 2022-03-08 A | 2022-03-11 A | 27 | 100% |  | Janet Tseng | 32h | 32h |
| 29 | 16.13 | Multi client monitoring same process | 3d | 2022-03-11 A | 2022-03-15 A | 28 | 100% |  | Janet Tseng | 24h | 24h |
| 30 | 17 | Point PresentData as an external referenced libarary | 6d | 2022-03-16 A | 2022-03-23 A | 28 | 100% | start no earlier than 2022-03-16 | Janet Tseng | 48h | 48h |
| 31 | 18 | pmGetFrameData Implementation - PresentMon API Update | 7d | 2022-03-24 A | 2022-04-01 A | 30 | 100% |  | Janet Tseng | 56h | 56h |
| 32 | 19 | Update PresentMon API library to use named shared memory interface. | 2d | 2022-03-02 A | 2022-03-03 A | 15 | 100% |  | Mark Galvan | 16h | 16h |
| 33 | 20 | Update PMApi ULTs | 2d | 2022-03-04 A | 2022-03-07 A | 32 | 100% |  | Mark Galvan | 16h | 16h |
| 34 | 21 | Remove Old Unused Code - Circular Buffer, Sessions, FPS service side calculations | 2d | 2022-03-08 A | 2022-03-09 A | 33 | 100% |  | Mark Galvan | 16h | 16h |
| 35 | 22 | Evaluate Percentile Calculations (99,95,90) and determine why/how they are different from FrameView overlay calcs | 3d | 2022-03-10 A | 2022-03-14 A | 34 | 100% |  | Mark Galvan | 24h | 24h |
| 36 | 23 | Continue OCPowerTelemetry Implementation | 1d | 2022-03-15 A | 2022-03-15 A | 35 | 100% |  | Mark Galvan | 8h | 8h |
| 37 | 24 | Update PmFrameData structure to include PowerTelemetry data | 1d | 2022-03-16 A | 2022-03-16 A | 36 | 100% |  | Mark Galvan | 8h | 8h |
| 38 | 25 | Add PresentMon API code to return back Power Telemetry Information | 2d | 2022-03-17 A | 2022-03-18 A | 37 | 100% |  | Mark Galvan | 16h | 16h |
| 39 | 26 | Monitor All Processes - pmStartStream(0) | 3d | 2022-04-04 A | 2022-04-06 A | 31 | 100% |  | Janet Tseng | 24h | 24h |

| ID | WBS | Task | Duration | Start | Finish | Predecessors | Complete | Remaining | Total slack | Free slack | Constraint | Resources | Work | Actual work |
| --- | --- | --- | --- | --- | --- | --- | --- | --- | --- | --- | --- | --- | --- | --- |
| 40 | 27 | **Multi Intel Adapter Support in Control Lib** | 14d | 2022-03-21 A | 2022-04-07 A | 38 | 100% |  |  |  |  |  | 112h | 112h |
| 41 | 27.1 | Update Named Shared Memory to be able to dynamically handle data for multiple Intel Graphics Adapters | 7d | 2022-03-21 A | 2022-03-29 A | 38 | 100% |  |  |  | start no earlier than 2022-03-18 | Mark Galvan | 56h | 56h |
| 42 | 27.2 | Update PresentMon API to accommodate multiple Intel Graphics Adapters. | 7d | 2022-03-30 A | 2022-04-07 A | 41 | 100% |  |  |  |  | Mark Galvan | 56h | 56h |
| 43 | 28 | Debug pmGetFrameData Implementation and Fix Bugs | 2d | 2022-04-08 A | 2022-04-11 A | 42 | 100% |  |  |  |  | Mark Galvan | 16h | 16h |
| 44 | 29 | Fix pmGetFrameData Multiple Frame bug | 2d | 2022-04-14 A | 2022-04-15 A | 43 | 100% |  |  |  | start no earlier than 2022-04-14 | Mark Galvan | 16h | 16h |
| 45 | 30 | PresentMon Delay Code | 5d | 2022-04-18 A | 2022-04-22 A | 44 | 100% |  |  |  |  | Mark Galvan | 40h | 40h |
| 46 | 31 | PresentMon Multiple Swap Chain Support for Get* | 5d | 2022-04-25 A | 2022-04-29 A | 45 | 100% |  |  |  |  | Mark Galvan | 40h | 40h |
| 47 | 32 | PresentMonService ETL parsing | 7d | 2022-05-02 A | 2022-05-13 A | 46 | 100% |  |  |  | finish no earlier than 2022-05-13 | Mark Galvan | 56h | 56h |
| 48 | 33 | Non-Global Named Shared Memory | 3d | 2022-04-20 A | 2022-04-22 A | 31 | 100% |  |  |  | start no earlier than 2022-04-20 | Janet Tseng | 24h | 24h |
| 49 | 34 | Symbolic Linking of PresentMon and Control Lib | 5d | 2022-04-25 | 2022-04-29 | 48 |  |  | 12d |  |  |  |  |  |
| 50 | 35 | **PresentMon2 Installation Program** | 11d | 2022-05-16 A | 2022-05-30 |  | 36% | 7d | 12d |  |  |  | 88h | 32h |
| 51 | 35.1 | Wix Research | 4d | 2022-05-16 A | 2022-05-19 A | 47 | 100% |  |  |  |  | Mark Galvan | 32h | 32h |
| 52 | 35.2 | Gather Installation Program Requirements | 2d | 2022-05-20 | 2022-05-23 | 51 |  |  | 12d | 0d |  | Mark Galvan | 16h |  |
| 53 | 35.3 | Implement Installation Program | 5d | 2022-05-24 | 2022-05-30 | 52 |  |  | 12d |  |  | Mark Galvan | 40h |  |
| 54 | 36 | **CPU Metrics** | 12d | 2022-01-04 | 2022-01-19 |  |  |  | 105d |  |  |  |  |  |
| 55 | 36.1 | Research Windows API Calls to return back CPU metric data | 5d | 2022-01-04 | 2022-01-10 |  |  |  | 105d | 0d |  |  |  |  |
| 56 | 36.2 | Research CPU Metrics available through Windows ETW | 5d | 2022-01-11 | 2022-01-17 | 55 |  |  | 105d | 0d |  |  |  |  |
| 57 | 36.3 | Determine CPU Metrics direction based on available calls, data and development time. | 2d | 2022-01-18 | 2022-01-19 | 56 |  |  | 105d |  |  |  |  |  |
| 58 | 37 | PresentMon Application using PresentMon Service | 10d | 2022-01-04 | 2022-01-17 |  |  |  | 107d |  |  |  |  |  |
| 59 | 38 | **Close Original PresentMon feature gaps** | 5d | 2022-04-08 | 2022-04-14 | 40 |  |  | 42d | 0d |  |  |  |  |
| 60 | 38.1 | Investigate PresentMon command line arguments and determine if any features are necessary to expose for PresentMon2 | 2d | 2022-04-08 | 2022-04-11 | 40 |  |  | 42d | 0d |  |  |  |  |
| 61 | 38.2 | Implemenent necessary features as described in task 40 | 3d | 2022-04-12 | 2022-04-14 | 60 |  |  | 42d |  |  |  |  |  |
| 62 | 39 | Dynamic start and stop of PresentMon ETW processing based on attached clients | 2d | 2022-04-15 | 2022-04-18 | 59 |  |  | 42d |  |  |  |  |  |
| 63 | 40 | Beautification of PresentMon2 code to Google C++ style | 2d | 2022-01-04 | 2022-01-05 |  |  |  | 115d |  |  |  |  |  |
| 64 | 41 | Move PresentMon2 repository to intel-innersource | 1d | 2022-01-04 | 2022-01-04 |  |  |  | 116d |  |  |  |  |  |

| ID | WBS | Task | Duration | Start | Finish | Predecessors | Complete | Total slack | Free slack | Constraint | Resources | Work | Actual work |
| --- | --- | --- | --- | --- | --- | --- | --- | --- | --- | --- | --- | --- | --- |
| 65 | 42 | **Enable CI for PresentMon2 ULTs** | 1d? | 2022-01-04 | 2022-01-04 |  |  | 116d |  |  |  |  |  |
| 66 | 42.1 | Update ULTs to be able to run in non-administrator mode for CI enablement? | 1d? | 2022-01-04 | 2022-01-04 |  |  | 116d |  |  |  |  |  |
| 67 | 43 | Full PresentMon2 code review | 5d | 2022-01-04 | 2022-01-10 |  |  | 112d |  |  |  |  |  |
| 68 | 44 | Update PresentMon ETW for PMC and LMT devices | 3d | 2022-04-08 | 2022-04-12 | 40 |  | 41d | 0d |  |  |  |  |
| 69 | 45 | Create/Update PresentMon Event Data structures to accomodate new ETW events from LMC and PMC applications | 5d | 2022-04-13 | 2022-04-19 | 68 |  | 41d |  |  |  |  |  |
| 70 | 46 | Service Self Update Implementation | 5d | 2022-01-04 | 2022-01-10 |  |  | 112d |  |  |  |  |  |
| 71 | 47 | Add PresentMonTests project into PresentMonService solution | 2d | 2022-01-04 A | 2022-01-05 A |  | 100% |  |  |  | Janet Tseng | 16h | 16h |
| 72 | 48 | **Main Process Experiments** | 5d | 2022-01-25 A | 2022-01-31 A |  | 100% |  |  |  |  | 40h | 40h |
| 73 | 48.1 | Synthesis of DirectCompose + Z-band 2D/3D interop | 1d | 2022-01-25 A | 2022-01-25 A |  | 100% |  |  | start no earlier than 2022-01-25 | Raymond Taylor | 8h | 8h |
| 74 | 48.2 | Dual window process test | 1d | 2022-01-26 A | 2022-01-26 A | 73 | 100% |  |  |  | Raymond Taylor | 8h | 8h |
| 75 | 48.3 | Qt + Z-Band overlay test | 3d | 2022-01-27 A | 2022-01-31 A | 74 | 100% |  |  |  | Raymond Taylor | 24h | 24h |
| 76 | 49 | **Code Organization and Infrastructure** | 13d | 2022-02-03 A | 2022-02-21 A |  | 100% |  |  |  |  | 104h | 104h |
| 77 | 49.1 | Logging Framework Prototype | 2d | 2022-02-03 A | 2022-02-04 A | 75 | 100% |  |  | start no earlier than 2022-02-03 | Raymond Taylor | 16h | 16h |
| 78 | 49.2 | Main organization (project/buildsystem/filesystem/namespace/testing) | 3d | 2022-02-07 A | 2022-02-09 A | 77 | 100% |  |  |  | Raymond Taylor | 24h | 24h |
| 79 | 49.3 | Reorg windows code | 1d | 2022-02-10 A | 2022-02-10 A | 78 | 100% |  |  |  | Raymond Taylor | 8h | 8h |
| 80 | 49.4 | Pull in and upgrade Service container | 2d | 2022-02-11 A | 2022-02-15 A | 79 | 100% |  |  |  | Raymond Taylor | 16h | 16h |
| 81 | 49.5 | Exception framework and finalization of logging framework | 2d | 2022-02-15 A | 2022-02-16 A | 80 | 100% |  |  |  | Raymond Taylor | 16h | 16h |
| 82 | 49.6 | Create graphics core | 3d | 2022-02-17 A | 2022-02-21 A | 81 | 100% |  |  |  | Raymond Taylor | 24h | 24h |
| 83 | 50 | **Layout and Model View** | 7d | 2022-02-22 A | 2022-03-02 A |  | 100% |  |  |  |  | 48h | 48h |
| 84 | 50.1 | Planning overall API design for defining component tree | 2d | 2022-02-22 A | 2022-02-24 A | 82 | 100% |  |  |  | Raymond Taylor | 16h | 16h |
| 85 | 50.2 | Developing the box sizing utilities | 1d | 2022-02-25 A | 2022-02-25 A | 84 | 100% |  |  |  | Raymond Taylor | 8h | 8h |
| 86 | 50.3 | Developing the flexbox layout utilities | 3d | 2022-02-28 A | 2022-03-02 A | 85 | 100% |  |  |  | Raymond Taylor | 24h | 24h |
| 87 | 51 | **First Demo Preparation** | 5d | 2022-03-03 A | 2022-03-09 A |  | 100% |  |  |  |  | 40h | 40h |
| 88 | 51.1 | Flex Layout Stretch | 1d | 2022-03-03 A | 2022-03-03 A | 86 | 100% |  |  |  | Raymond Taylor | 8h | 8h |
| 89 | 51.2 | Reconnecting Qt to Core | 2d | 2022-03-04 A | 2022-03-07 A | 88 | 100% |  |  |  | Raymond Taylor | 16h | 16h |
| 90 | 51.3 | Developing Qt layout control | 1d | 2022-03-08 A | 2022-03-08 A | 89 | 100% |  |  |  | Raymond Taylor | 8h | 8h |
| 91 | 51.4 | Refactoring layout algos to unify procedure for row and column | 1d | 2022-03-09 A | 2022-03-09 A | 90 | 100% |  |  |  | Raymond Taylor | 8h | 8h |

| ID | WBS | Task | Duration | Start | Finish | Predecessors | Complete | Remaining | Total slack | Resources | Work | Actual work |
| --- | --- | --- | --- | --- | --- | --- | --- | --- | --- | --- | --- | --- |
| 92 | 52 | **Second Demo Preparation** | 17d | 2022-03-10 A | 2022-04-01 A |  | 100% |  |  |  | 136h | 136h |
| 93 | 52.1 | Logging / Exception improvements | 1d | 2022-03-10 A | 2022-03-10 A | 91 | 100% |  |  | Raymond Taylor | 8h | 8h |
| 94 | 52.2 | Fastdraw batch separation | 2d | 2022-03-11 A | 2022-03-14 A | 93 | 100% |  |  | Raymond Taylor | 16h | 16h |
| 95 | 52.3 | Retained D2D primatives with geometric realizations | 1d | 2022-03-15 A | 2022-03-15 A | 94 | 100% |  |  | Raymond Taylor | 8h | 8h |
| 96 | 52.4 | Document container with ID hashmap | 1d | 2022-03-16 A | 2022-03-16 A | 95 | 100% |  |  | Raymond Taylor | 8h | 8h |
| 97 | 52.5 | Flex grow layout functionality | 2d | 2022-03-17 A | 2022-03-18 A | 96 | 100% |  |  | Raymond Taylor | 16h | 16h |
| 98 | 52.6 | Graph element composition | 1d | 2022-03-21 A | 2022-03-21 A | 97 | 100% |  |  | Raymond Taylor | 8h | 8h |
| 99 | 52.7 | External datasource binding | 1d | 2022-03-22 A | 2022-03-22 A | 98 | 100% |  |  | Raymond Taylor | 8h | 8h |
| 100 | 52.8 | Overlay performance cost investigation | 1d | 2022-03-23 A | 2022-03-23 A | 99 | 100% |  |  | Raymond Taylor | 8h | 8h |
| 101 | 52.9 | Triangle drawing in fastdraw w/ separate batch organization | 2d | 2022-03-24 A | 2022-03-25 A | 100 | 100% |  |  | Raymond Taylor | 16h | 16h |
| 102 | 52.10 | Filled line plotting | 1d | 2022-03-28 A | 2022-03-28 A | 101 | 100% |  |  | Raymond Taylor | 8h | 8h |
| 103 | 52.11 | Antialiased line rendering | 1d | 2022-03-29 A | 2022-03-29 A | 102 | 100% |  |  | Raymond Taylor | 8h | 8h |
| 104 | 52.12 | Qt demo interface for configuring graph layout and styling | 3d | 2022-03-30 A | 2022-04-01 A | 103 | 100% |  |  | Raymond Taylor | 24h | 24h |
| 105 | 53 | **Third Demo Preparation** | 7.5d | 2022-04-04 A | 2022-04-13 A |  | 100% |  |  |  | 60h | 60h |
| 106 | 53.1 | D2D error checking / reporting | 0.5d | 2022-04-04 A | 2022-04-04 A | 104 | 100% |  |  | Raymond Taylor | 4h | 4h |
| 107 | 53.2 | Multi-brush borders | 1d | 2022-04-04 A | 2022-04-05 A | 106 | 100% |  |  | Raymond Taylor | 8h | 8h |
| 108 | 53.3 | Improved graph styling | 1d | 2022-04-05 A | 2022-04-06 A | 107 | 100% |  |  | Raymond Taylor | 8h | 8h |
| 109 | 53.4 | Fastdraw rects | 1d | 2022-04-06 A | 2022-04-07 A | 108 | 100% |  |  | Raymond Taylor | 8h | 8h |
| 110 | 53.5 | Histogram plot | 1d | 2022-04-07 A | 2022-04-08 A | 109 | 100% |  |  | Raymond Taylor | 8h | 8h |
| 111 | 53.6 | Improved graph axis control | 1d | 2022-04-08 A | 2022-04-11 A | 110 | 100% |  |  | Raymond Taylor | 8h | 8h |
| 112 | 53.7 | PM2 SDK initial integration | 2d | 2022-04-11 A | 2022-04-13 A | 111 | 100% |  |  | Raymond Taylor | 16h | 16h |
| 113 | 54 | **Pivot to CEF** | 11.5d | 2022-04-13 A | 2022-04-28 |  | 81% | 2.19d | 0d |  | 84h | 68h |
| 114 | 54.1 | Upgrade solutions to VS 2022 | 0.5d | 2022-04-13 A | 2022-04-13 A | 112 | 100% |  |  | Raymond Taylor | 4h | 4h |
| 115 | 54.2 | Transplanting Core to NanoCEF solution and verify functionality | 0.5d | 2022-04-14 A | 2022-04-14 A | 114 | 100% |  |  | Raymond Taylor | 4h | 4h |
| 116 | 54.3 | Implement CEF Scheme handlers for loading web assets from disk | 1d | 2022-04-14 A | 2022-04-15 A | 115 | 100% |  |  | Raymond Taylor | 8h | 8h |
| 117 | 54.4 | Two-way synchronous communication between V8 and Core | 1d | 2022-04-15 A | 2022-04-18 A | 116 | 100% |  |  | Raymond Taylor | 8h | 8h |
| 118 | 54.5 | Fuse Core projects with NanoCEF project into a single solution | 0.5d | 2022-04-18 A | 2022-04-18 A | 117 | 100% |  |  | Raymond Taylor | 4h | 4h |
| 119 | 54.6 | Node test project with Vue.js 2 / Vuetify 3 | 0.5d | 2022-04-19 A | 2022-04-19 A | 118 | 100% |  |  | Raymond Taylor | 4h | 4h |
| 120 | 54.7 | Tracking target window using event hooks | 1d | 2022-04-19 A | 2022-04-20 A | 119 | 100% |  |  | Raymond Taylor | 8h | 8h |
| 121 | 54.8 | Enumerating processes and selecting from UI | 0.5d | 2022-04-20 A | 2022-04-20 A | 120 | 100% |  |  | Raymond Taylor | 4h | 4h |
| 122 | 54.9 | Multithreaded safety improvements for service container | 0.5d | 2022-04-21 A | 2022-04-21 A | 121 | 100% |  |  | Raymond Taylor | 4h | 4h |
| 123 | 54.10 | Cross-process, cross-thread logging driver and router | 1d | 2022-04-21 A | 2022-04-22 A | 122 | 100% |  |  | Raymond Taylor | 8h | 8h |
| 124 | 54.11 | Major Core <=> app interface refactor (Kernel) | 1d | 2022-04-22 A | 2022-04-25 A | 123 | 100% |  |  | Raymond Taylor | 8h | 8h |
| 125 | 54.12 | Devtools access and hotloading | 0.5d | 2022-04-26 A | 2022-04-26 A | 124 | 100% |  |  | Raymond Taylor | 4h | 4h |
| 126 | 54.13 | Multitab vuetify frontend | 1d | 2022-04-27 | 2022-04-27 | 125 |  |  | 0d | Raymond Taylor | 8h |  |
| 127 | 54.14 | Positioning and retargetting overlay | 1d | 2022-04-28 | 2022-04-28 | 126 |  |  | 0d | Raymond Taylor | 8h |  |

| ID | WBS | Task | Duration | Start | Finish | Predecessors | Total slack | Resources | Work |
| --- | --- | --- | --- | --- | --- | --- | --- | --- | --- |
| 128 | 55 | **Beta Release Preparation** | 28d | 2022-05-02 | 2022-06-08 | 113 | 0d |  | 176h |
| 129 | 55.1 | Trace Capture | 3d | 2022-05-02 | 2022-05-09 |  | 0d | Raymond Taylor | 24h |
| 130 | 55.2 | Value Display for Overlay | 3d | 2022-05-10 | 2022-05-17 | 129 | 0d | Raymond Taylor | 24h |
| 131 | 55.3 | Data Source Management (PM2 SDK) | 4d | 2022-05-18 | 2022-05-23 | 130 | 0d | Raymond Taylor | 32h |
| 132 | 55.4 | Value Display on Overlay | 3d | 2022-05-24 | 2022-05-26 | 131 | 0d | Raymond Taylor | 24h |
| 133 | 55.5 | Overlay Layout Design | 5d | 2022-05-27 | 2022-06-02 | 132 | 0d | Raymond Taylor | 40h |
| 134 | 55.6 | Hotkeys | 2d | 2022-06-03 | 2022-06-06 | 133 | 0d | Raymond Taylor | 16h |
| 135 | 55.7 | Persisting Overlay Configs | 2d | 2022-06-07 | 2022-06-08 | 134 | 0d | Raymond Taylor | 16h |
| 136 | 56 | Stability Etc. | 5d | 2022-06-09 | 2022-06-15 | 128 | 0d | Raymond Taylor | 40h |
